# Opracowanie strony internetowej

Schedule from MS Project, 2024-03-25 to 2024-06-18.

## Calendars

- Standardowy: Mon-Fri 09:00-13:00, 14:00-18:00; Sat-Sun off.

## Resources

| Resource |
| --- |
| Olek Student Super |
| Dupa |

## Schedule

| ID | WBS | Task | Duration | Start | Finish | Predecessors | Total slack | Free slack |
| --- | --- | --- | --- | --- | --- | --- | --- | --- |
| 1 | 1 | **Iteracja 1 - Definicja wymagań** | 5d | 2024-03-25 | 2024-03-29 |  | 3d | 0d |
| 2 | 1.1 | **Raporty** | 5d | 2024-03-25 | 2024-03-29 |  | 3d |  |
| 3 | 1.1.1 | **Specyfikacje funkcjonalne** | 5d | 2024-03-25 | 2024-03-29 |  | 3d |  |
| 4 | 1.1.1.1 | **Zbierz wymagania użytkownika** | 1d | 2024-03-25 | 2024-03-25 |  | 3d | 0d |
| 5 | 1.1.1.1.1 | Zdefiniuj elementy danych | 1d | 2024-03-25 | 2024-03-25 |  | 3d | 0d |
| 6 | 1.1.1.1.2 | Zdefiniuj częstotliwość wywoływania strony | 1d | 2024-03-25 | 2024-03-25 | 5SS | 3d | 0d |
| 7 | 1.1.1.1.3 | Zdefiniuj odbiorców | 1d | 2024-03-25 | 2024-03-25 | 6SS | 3d |  |
| 8 | 1.1.1.2 | Raporty z wykonanych projektów | 1d | 2024-03-26 | 2024-03-26 | 4 | 3d | 0d |
| 9 | 1.1.1.3 | Zdefiniuj raport z zespołem projektowym | 1d | 2024-03-27 | 2024-03-27 | 8 | 3d | 0d |
| 10 | 1.1.1.4 | Dostarcz ostateczne specyfikacje funkcjonalne | 1d | 2024-03-28 | 2024-03-28 | 9 | 3d | 0d |
| 11 | 1.1.1.5 | Uzyskaj akceptację użytkownika | 1d | 2024-03-29 | 2024-03-29 | 10 | 3d |  |
| 14 | 2 | **Iteracja 2 - Baza danych** | 26d? | 2024-04-01 | 2024-05-06 | 1 | 3d | 0d |
| 15 | 2.1 | **Projektowanie** | 19d | 2024-04-01 | 2024-04-25 |  | 3d | 0d |
| 16 | 2.1.1 | **Interfejs użytkownika internetowego** | 19d | 2024-04-01 | 2024-04-25 |  | 3d |  |
| 17 | 2.1.1.1 | **Specyfikacja techniczna** | 19d | 2024-04-01 | 2024-04-25 |  | 3d |  |
| 18 | 2.1.1.1.1 | Opracuj specyfikacje techniczne | 5d | 2024-04-01 | 2024-04-05 |  | 3d | 0d |
| 19 | 2.1.1.1.2 | Zapoznaj się z specyfikacjami technicznymi z zespołem projektowym | 12d | 2024-04-08 | 2024-04-23 | 18 | 3d | 0d |
| 20 | 2.1.1.1.3 | Uzyskaj akceptację zespołu | 2d | 2024-04-24 | 2024-04-25 | 19 | 3d | 0d |
| 21 | 2.1.2 | **Baza danych SQL** | 19d | 2024-04-01 | 2024-04-25 |  | 3d |  |
| 22 | 2.1.2.1 | **Specyfikacja techniczna** | 19d | 2024-04-01 | 2024-04-25 |  | 3d |  |
| 23 | 2.1.2.1.1 | Opracuj specyfikacje techniczne | 5d | 2024-04-01 | 2024-04-05 | 18SS | 8d | 0d |
| 24 | 2.1.2.1.2 | Zapoznaj się z specyfikacjami technicznymi z zespołem projektowym | 4d | 2024-04-08 | 2024-04-11 | 23 | 8d |  |
| 25 | 2.1.2.1.3 | Uzyskaj akceptację zespołu | 2d | 2024-04-24 | 2024-04-25 | 20FF, 24 | 3d |  |
| 26 | 2.2 | **Implementacja** | 4d | 2024-04-26 | 2024-05-01 | 15 | 3d | 0d |
| 27 | 2.2.1 | **Baza danych SQL** | 4d | 2024-04-26 | 2024-05-01 |  | 3d |  |
| 28 | 2.2.1.1 | Identyfikuj relacje | 1d | 2024-04-26 | 2024-04-26 |  | 3d | 0d |
| 29 | 2.2.1.2 | Tworzenie tabel bazy danych | 1d | 2024-04-29 | 2024-04-29 | 28 | 3d | 0d |
| 30 | 2.2.1.3 | Przegląd tabel z zespołem projektowym | 1d | 2024-04-30 | 2024-04-30 | 29 | 3d | 0d |
| 31 | 2.2.1.4 | Uzyskaj akceptację zespołu | 1d | 2024-05-01 | 2024-05-01 | 30 | 3d |  |

| ID | WBS | Task | Duration | Start | Finish | Predecessors | Total slack | Free slack |
| --- | --- | --- | --- | --- | --- | --- | --- | --- |
| 32 | 2.3 | **Zapewnienie jakości** | 2d? | 2024-05-02 | 2024-05-03 | 26 | 3d |  |
| 33 | 2.3.1 | **Baza danych SQL** | 2d? | 2024-05-02 | 2024-05-03 |  | 3d |  |
| 34 | 2.3.1.1 | Weryfikuj elementy projektu / danych | 1d? | 2024-05-02 | 2024-05-02 |  | 3d | 0d |
| 35 | 2.3.1.2 | Zweryfikuj relacje | 1d? | 2024-05-03 | 2024-05-03 | 34 | 3d | 0d |
| 36 | 2.4 | **Raporty** | 1d | 2024-05-06 | 2024-05-06 |  | 3d |  |
| 37 | 2.4.1 | Sprawdź projekt i funkcjonalność | 1d | 2024-05-06 | 2024-05-06 | 35 | 3d |  |
| 41 | 3 | **Iteracja 3 - Komunikacja między modułami** | 8d | 2024-05-07 | 2024-05-16 | 14 | 3d | 0d |
| 42 | 3.1 | **Projektowanie** | 3d | 2024-05-07 | 2024-05-09 |  | 3d | 0d |
| 43 | 3.1.1 | **Interfejsy podsystemów** | 3d | 2024-05-07 | 2024-05-09 |  | 3d |  |
| 44 | 3.1.1.1 | **Określ elementy importu / eksportu danych** | 1d | 2024-05-07 | 2024-05-07 |  | 3d | 0d |
| 45 | 3.1.1.1.1 | Zdefiniuj potrzeby użytkownika | 1d | 2024-05-07 | 2024-05-07 |  | 3d | 0d |
| 46 | 3.1.1.1.2 | Zdefiniuj potrzeby informatyczne | 1d | 2024-05-07 | 2024-05-07 | 45SS | 3d |  |
| 47 | 3.1.1.2 | Interfejsy projektowe | 1d | 2024-05-08 | 2024-05-08 | 44 | 3d | 0d |
| 48 | 3.1.1.3 | Uzyskaj akceptację zespołu | 1d | 2024-05-09 | 2024-05-09 | 47 | 3d |  |
| 49 | 3.2 | **Implementacja** | 3d | 2024-05-10 | 2024-05-14 | 42 | 3d | 0d |
| 50 | 3.2.1 | **Interfejsy międzymodułowe** | 3d | 2024-05-10 | 2024-05-14 |  | 3d |  |
| 51 | 3.2.1.1 | Zbuduj interfejsy | 1d | 2024-05-10 | 2024-05-10 |  | 3d | 0d |
| 52 | 3.2.1.2 | Przeprowadź test jednostkowy funkcji importu / eksportu | 1d | 2024-05-13 | 2024-05-13 | 51 | 3d | 0d |
| 53 | 3.2.1.3 | Uzyskaj akceptację zespołu | 1d | 2024-05-14 | 2024-05-14 | 52 | 3d |  |
| 54 | 3.3 | **Zapewnienie jakości** | 2d | 2024-05-15 | 2024-05-16 | 49 | 3d |  |
| 55 | 3.3.1 | **Interfejsy** | 1d | 2024-05-15 | 2024-05-15 |  | 3d | 0d |
| 56 | 3.3.1.1 | Sprawdź projekt i funkcjonalność | 1d | 2024-05-15 | 2024-05-15 |  | 3d |  |
| 57 | 3.3.2 | **Raporty** | 1d | 2024-05-16 | 2024-05-16 | 55 | 3d |  |
| 58 | 3.3.2.1 | Sprawdź projekt i funkcjonalność | 1d | 2024-05-16 | 2024-05-16 |  | 3d |  |

| ID | WBS | Task | Duration | Start | Finish | Predecessors | Total slack | Free slack |
| --- | --- | --- | --- | --- | --- | --- | --- | --- |
| 62 | 4 | **Iteracja 4 - Interfejs użytkownika** | 10d | 2024-05-17 | 2024-05-30 | 41 | 3d | 0d |
| 63 | 4.1 | **Projektowanie** | 4d | 2024-05-17 | 2024-05-22 |  | 3d | 0d |
| 64 | 4.1.1 | **Interfejs użytkownika internetowego** | 4d | 2024-05-17 | 2024-05-22 |  | 3d |  |
| 65 | 4.1.1.1 | **Specyfikacje funkcjonalne** | 4d | 2024-05-17 | 2024-05-22 |  | 3d |  |
| 66 | 4.1.1.1.1 | Utwórz makiety interfejsu użytkownika | 1d | 2024-05-17 | 2024-05-17 |  | 3d | 0d |
| 67 | 4.1.1.1.2 | Przeprowadź przegląd projektu | 1d | 2024-05-20 | 2024-05-20 | 66 | 3d | 0d |
| 68 | 4.1.1.1.3 | Dostarcz ostateczne specyfikacje funkcjonalne | 1d | 2024-05-21 | 2024-05-21 | 67 | 3d | 0d |
| 69 | 4.1.1.1.4 | Uzyskaj akceptację użytkownika | 1d | 2024-05-22 | 2024-05-22 | 68 | 3d |  |
| 70 | 4.2 | **Implementacja** | 3d | 2024-05-23 | 2024-05-27 | 63 | 3d | 0d |
| 71 | 4.2.1 | **Interfejs WWW** | 3d | 2024-05-23 | 2024-05-27 |  | 3d |  |
| 72 | 4.2.1.1 | Kodowanie strony internetowej | 1d | 2024-05-23 | 2024-05-23 |  | 3d | 0d |
| 73 | 4.2.1.2 | Przeprowadzenie testów jednostkowych | 1d | 2024-05-23 | 2024-05-23 | 72FF | 3d | 0d |
| 74 | 4.2.1.3 | Przejrzenie projektu / funkcjonalności strony internetowej | 1d | 2024-05-24 | 2024-05-24 | 73 | 3d | 0d |
| 75 | 4.2.1.4 | Uzyskaj akceptację użytkownika | 1d | 2024-05-27 | 2024-05-27 | 74 | 3d |  |
| 76 | 4.3 | **Zapewnienie jakości** | 3d | 2024-05-28 | 2024-05-30 | 70 | 3d |  |
| 77 | 4.3.1 | **Interfejs WWW** | 2d | 2024-05-28 | 2024-05-29 |  | 3d | 0d |
| 78 | 4.3.1.1 | Sprawdź projekt i funkcjonalność | 1d | 2024-05-28 | 2024-05-28 |  | 3d | 0d |
| 79 | 4.3.1.2 | Przeprowadzenie testów jednostkowych | 1d | 2024-05-29 | 2024-05-29 | 78 | 3d |  |
| 80 | 4.3.2 | **Raporty** | 1d | 2024-05-30 | 2024-05-30 | 77 | 3d |  |
| 81 | 4.3.2.1 | Sprawdź projekt i funkcjonalność | 1d | 2024-05-30 | 2024-05-30 |  | 3d |  |
| 85 | 5 | **Iteracja 5 - Integracja modułów** | 4d | 2024-05-31 | 2024-06-05 | 62 | 3d | 0d |
| 86 | 5.1 | **Zapewnienie jakości** | 2d | 2024-05-31 | 2024-06-03 |  | 3d | 0d |
| 87 | 5.1.1 | **Interfejs WWW** | 1d | 2024-05-31 | 2024-05-31 |  | 4d | 0d |
| 88 | 5.1.1.1 | Wykonaj test integracji | 1d | 2024-05-31 | 2024-05-31 |  | 4d |  |

| ID | WBS | Task | Duration | Start | Finish | Predecessors | Total slack | Free slack |
| --- | --- | --- | --- | --- | --- | --- | --- | --- |
| 89 | 5.1.2 | **Baza danych SQL** | 1d | 2024-05-31 | 2024-05-31 | 87SS | 4d | 0d |
| 90 | 5.1.2.1 | Wykonaj test integracji | 1d | 2024-05-31 | 2024-05-31 |  | 4d |  |
| 91 | 5.1.3 | **Interfejsy** | 1d | 2024-05-31 | 2024-05-31 | 89SS | 3d | 0d |
| 92 | 5.1.3.1 | Wykonaj test integracji | 1d | 2024-05-31 | 2024-05-31 |  | 3d |  |
| 93 | 5.1.4 | **Raporty** | 1d | 2024-06-03 | 2024-06-03 | 91 | 3d |  |
| 94 | 5.1.4.1 | Raportuj test integracji | 1d | 2024-06-03 | 2024-06-03 |  | 3d |  |
| 95 | 5.2 | **Implementacja** | 1d | 2024-06-04 | 2024-06-04 | 86 | 3d | 0d |
| 96 | 5.2.1 | Wprowadzenie poprawek na podstawie wyników testów integracyjnych | 1d | 2024-06-04 | 2024-06-04 |  | 3d |  |
| 97 | 5.3 | **Zapewnienie jakości** | 1d | 2024-06-05 | 2024-06-05 | 95 | 3d |  |
| 98 | 5.3.1 | **Interfejs WWW** | 1d | 2024-06-05 | 2024-06-05 |  | 3d | 0d |
| 99 | 5.3.1.1 | Wykonaj test akceptacji użytkownika | 1d | 2024-06-05 | 2024-06-05 |  | 3d |  |
| 100 | 5.3.2 | **Baza danych SQL** | 1d | 2024-06-05 | 2024-06-05 | 98SS | 3d | 0d |
| 101 | 5.3.2.1 | Wykonaj test akceptacji użytkownika | 1d | 2024-06-05 | 2024-06-05 |  | 3d |  |
| 102 | 5.3.3 | **Interfejsy** | 1d | 2024-06-05 | 2024-06-05 | 100SS | 3d | 0d |
| 103 | 5.3.3.1 | Wykonaj test akceptacji użytkownika | 1d | 2024-06-05 | 2024-06-05 |  | 3d |  |
| 104 | 5.3.4 | **Raporty** | 1d | 2024-06-05 | 2024-06-05 | 102SS | 3d |  |
| 105 | 5.3.4.1 | Raportuj test akceptacji użytkownika | 1d | 2024-06-05 | 2024-06-05 |  | 3d |  |
| 109 | 6 | **Iteracja 6 - Wprowadzenie projektu** | 9d? | 2024-06-06 | 2024-06-18 | 85 | 0d |  |
| 110 | 6.1 | **Projektowanie** | 2d | 2024-06-06 | 2024-06-07 |  | 3d | 0d |
| 111 | 6.1.1 | **Informacja zwrotna** | 2d | 2024-06-06 | 2024-06-07 |  | 3d |  |
| 112 | 6.1.1.1 | Zdefiniowanie wymaganych modyfikacji | 1d | 2024-06-06 | 2024-06-06 |  | 3d | 0d |
| 113 | 6.1.1.2 | Akceptacja użytkownika | 1d | 2024-06-07 | 2024-06-07 | 112 | 3d |  |
| 114 | 6.2 | **Implementacja** | 1d? | 2024-06-10 | 2024-06-10 | 110 | 3d | 0d |
| 115 | 6.2.1 | Implementacja modyfikacji określonych przez użytkownika | 1d? | 2024-06-10 | 2024-06-10 |  | 3d |  |

| ID | WBS | Task | Duration | Start | Finish | Predecessors | Total slack | Free slack | Constraint |
| --- | --- | --- | --- | --- | --- | --- | --- | --- | --- |
| 116 | 6.3 | **Zapewnienie jakości** | 5d | 2024-06-11 | 2024-06-17 | 114 | 0d |  |  |
| 117 | 6.3.1 | Wykonaj test integracji | 1d | 2024-06-11 | 2024-06-11 |  | 3d | 1d |  |
| 118 | 6.3.2 | Wykonaj test akceptacji użytkownika | 1d | 2024-06-13 | 2024-06-14 | 119SF, 117 | 2d |  |  |
| 119 | 6.3.3 | Uzyskaj akceptację użytkownika | 2d | 2024-06-14 | 2024-06-17 |  | 0d |  | start no earlier than 2024-06-14 |
| 120 | 6.4 | **Raporty** | 1d | 2024-06-18 | 2024-06-18 | 116 | 0d |  |  |
| 121 | 6.4.1 | Uzyskaj akceptację użytkownika | 1d | 2024-06-18 | 2024-06-18 |  | 0d |  |  |
